# Code Milestones

How a schedule from MS Project changed from version to version. A marks actual dates.

## Version 1 (saved 2000-10-23, file TaskList.mpp)

Note of the change: SBSP/Disc 1 in PSX

| ID | WBS | Task | Duration | Start | Finish | Total float |
| --- | --- | --- | --- | --- | --- | --- |
| 1 | 1 | **Map Editor** | 71d | 2000-10-16 | 2001-01-22 | 81d |
| 2 |  | Core Functionality | 5d | 2000-10-16 | 2000-10-20 | 147d |
| 3 | 1.2 | **Layers** | 28d | 2000-10-23 | 2000-11-29 | 119d |
| 4 | 1.2.1 | **Gfx Layers** | 8d | 2000-10-23 | 2000-11-01 | 139d |
| 5 |  | Background Layer | 2d | 2000-10-23 | 2000-10-24 | 145d |
| 6 |  | Mid Layer | 2d | 2000-10-25 | 2000-10-26 | 143d |
| 7 |  | Action Layer | 2d | 2000-10-27 | 2000-10-30 | 141d |
| 8 |  | Fore Layer | 2d | 2000-10-31 | 2000-11-01 | 139d |
| 9 | 1.2.2 | **Data Layers** | 20d | 2000-11-02 | 2000-11-29 | 119d |
| 10 |  | Collision Layer | 5d | 2000-11-02 | 2000-11-08 | 134d |
| 11 |  | Platform Layer | 5d | 2000-11-09 | 2000-11-15 | 129d |
| 12 |  | NPC Layer | 5d | 2000-11-16 | 2000-11-22 | 124d |
| 13 |  | Item Layer | 5d | 2000-11-23 | 2000-11-29 | 119d |
| 14 | 1.3 | **Tile Bank** | 5d | 2000-11-30 | 2000-12-06 | 114d |
| 15 | 1.3.1 | **Tile Set** | 5d | 2000-11-30 | 2000-12-06 | 114d |
| 16 |  | Core | 4d | 2000-11-30 | 2000-12-05 | 115d |
| 17 |  | GUI | 1d | 2000-12-06 | 2000-12-06 | 114d |
| 18 | 1.4 | **Map Data** | 2d | 2000-12-07 | 2000-12-08 | 112d |
| 19 |  | Core | 2d | 2000-12-07 | 2000-12-08 | 112d |
| 20 | 1.5 | **Project** | 4d | 2000-12-11 | 2000-12-14 | 108d |
| 21 |  | Load Project | 2d | 2000-12-11 | 2000-12-12 | 110d |
| 22 |  | Save Project | 2d | 2000-12-13 | 2000-12-14 | 108d |
| 23 | 1.6 | **Output** | 13d | 2000-12-15 | 2001-01-02 | 95d |
| 24 | 1.6.1 | **PSX Data** | 7d | 2000-12-15 | 2000-12-25 | 101d |
| 25 | 1.6.1.1 | **Map Data** | 5d | 2000-12-15 | 2000-12-21 | 103d |
| 26 |  | Level Data | 1d | 2000-12-15 | 2000-12-15 | 107d |
| 27 |  | Collision Data | 1d | 2000-12-18 | 2000-12-18 | 106d |
| 28 |  | Platform Data | 1d | 2000-12-19 | 2000-12-19 | 105d |
| 29 |  | NPC Data | 1d | 2000-12-20 | 2000-12-20 | 104d |
| 30 |  | Item Data | 1d | 2000-12-21 | 2000-12-21 | 103d |
| 31 | 1.6.1.2 | **Tile Data** | 2d | 2000-12-22 | 2000-12-25 | 101d |
| 32 |  | Tile Blocks | 1d | 2000-12-22 | 2000-12-22 | 102d |
| 33 |  | Textures | 1d | 2000-12-25 | 2000-12-25 | 101d |
| 34 | 1.6.2 | **AGB Data** | 6d | 2000-12-26 | 2001-01-02 | 95d |
| 35 | 1.6.2.1 | **Map Data** | 5d | 2000-12-26 | 2001-01-01 | 96d |
| 36 |  | Level Data | 1d | 2000-12-26 | 2000-12-26 | 100d |
| 37 |  | Collision Data | 1d | 2000-12-27 | 2000-12-27 | 99d |
| 38 |  | Platform Data | 1d | 2000-12-28 | 2000-12-28 | 98d |
| 39 |  | NPC Data | 1d | 2000-12-29 | 2000-12-29 | 97d |
| 40 |  | Item Data | 1d | 2001-01-01 | 2001-01-01 | 96d |
| 41 | 1.6.2.2 | **Tile Data** | 1d | 2001-01-02 | 2001-01-02 | 95d |
| 42 |  | Textures | 1d | 2001-01-02 | 2001-01-02 | 95d |
| 43 | 1.7 | **Edit Functions** | 14d | 2001-01-03 | 2001-01-22 | 81d |
| 44 |  | Paint | 2d | 2001-01-03 | 2001-01-04 | 93d |
| 45 |  | Bounding Box Selection | 2d | 2001-01-05 | 2001-01-08 | 91d |
| 46 |  | Copy/Cut | 2d | 2001-01-09 | 2001-01-10 | 89d |
| 47 |  | Paste | 2d | 2001-01-11 | 2001-01-12 | 87d |
| 48 |  | Undo/Redo | 2d | 2001-01-15 | 2001-01-16 | 85d |
| 49 |  | Tile Mirror | 2d | 2001-01-17 | 2001-01-18 | 83d |
| 50 |  | Eye Dropper | 2d | 2001-01-19 | 2001-01-22 | 81d |
| 51 | 2 | **Project** | 152d | 2000-10-16 | 2001-05-15 | 0d |
| 52 | 2.1 | **System Code** | 73d | 2000-10-16 | 2001-01-24 | 79d |
| 53 |  | Generic Pad Handler | 1d | 2000-10-16 | 2000-10-16 | 151d |
| 54 |  | Memory Management | 2d | 2000-10-17 | 2000-10-18 | 149d |
| 55 |  | File Handler | 2d | 2000-10-19 | 2000-10-20 | 147d |
| 56 |  | Error Handler | 2d | 2000-10-23 | 2000-10-24 | 145d |
| 57 |  | Sprite Engine | 2d | 2000-10-25 | 2000-10-26 | 143d |
| 58 |  | Scene Handler | 2d | 2000-10-27 | 2000-10-30 | 141d |
| 59 |  | Localisation Database | 5d | 2000-10-31 | 2000-11-06 | 136d |
| 60 | 2.1.8 | **Audio** | 57d | 2000-11-07 | 2001-01-24 | 79d |
| 61 |  | PSX Audio Driver | 4d | 2000-11-07 | 2000-11-10 | 132d |
| 62 |  | Music | 3d | 2000-11-13 | 2000-11-15 | 129d |
| 63 |  | Samples | 3d | 2000-11-16 | 2000-11-20 | 126d |
| 64 |  | Speech | 2d | 2001-01-23 | 2001-01-24 | 79d |
| 65 | 2.1.9 | **Memcard** | 20d | 2000-11-21 | 2000-12-18 | 106d |
| 66 |  | Load | 10d | 2000-11-21 | 2000-12-04 | 116d |
| 67 |  | Save | 10d | 2000-12-05 | 2000-12-18 | 106d |
| 68 | 2.1.10 | **GUI Handler** | 18d | 2000-12-19 | 2001-01-11 | 88d |
| 69 | 2.1.10.1 | **GUI Components (Generic)** | 18d | 2000-12-19 | 2001-01-11 | 88d |
| 70 |  | Parent Frame | 2d | 2000-12-19 | 2000-12-20 | 104d |

| ID | WBS | Task | Duration | Start | Finish | Total float |
| --- | --- | --- | --- | --- | --- | --- |
| 71 |  | Child Frame | 2d | 2000-12-21 | 2000-12-22 | 102d |
| 72 |  | Textbox | 2d | 2000-12-25 | 2000-12-26 | 100d |
| 73 |  | EditBox | 2d | 2000-12-27 | 2000-12-28 | 98d |
| 74 |  | Buttons | 2d | 2000-12-29 | 2001-01-01 | 96d |
| 75 |  | Bitmap | 2d | 2001-01-02 | 2001-01-03 | 94d |
| 76 |  | Vertical Scroll Bar | 2d | 2001-01-04 | 2001-01-05 | 92d |
| 77 |  | Horizontal Scroll Bar | 2d | 2001-01-08 | 2001-01-09 | 90d |
| 78 |  | Spinner | 2d | 2001-01-10 | 2001-01-11 | 88d |
| 79 |  | Load (Game) | 2d | 2001-01-12 | 2001-01-15 | 86d |
| 80 |  | FMA | 0d | 2000-10-16 | 2000-10-16 | 152d |
| 81 | 2.2 | **Front-end** | 22d | 2001-01-16 | 2001-02-14 | 64d |
| 82 | 2.2.1 | **Main Screen GUI** | 20d | 2001-01-16 | 2001-02-12 | 66d |
| 83 |  | New Game GUI | 4d | 2001-01-16 | 2001-01-19 | 82d |
| 84 |  | Load Game GUI | 4d | 2001-01-22 | 2001-01-25 | 78d |
| 85 | 2.2.1.3 | **Options GUI** | 12d | 2001-01-26 | 2001-02-12 | 66d |
| 86 |  | Control GUI | 4d | 2001-01-26 | 2001-01-31 | 74d |
| 87 |  | Audio GUI | 4d | 2001-02-01 | 2001-02-06 | 70d |
| 88 |  | Screen GUI | 4d | 2001-02-07 | 2001-02-12 | 66d |
| 89 |  | Demo Loop | 2d | 2001-02-13 | 2001-02-14 | 64d |
| 90 | 2.3 | **Game** | 152d | 2000-10-16 | 2001-05-15 | 0d |
| 91 | 2.3.1 | **Level** | 5d | 2001-01-25 | 2001-01-31 | 74d |
| 92 | 2.3.1.1 | **Layers** | 5d | 2001-01-25 | 2001-01-31 | 74d |
| 93 |  | Background Layer | 1d | 2001-01-25 | 2001-01-25 | 78d |
| 94 |  | Mid Layer | 1d | 2001-01-26 | 2001-01-26 | 77d |
| 95 |  | Action Layer | 2d | 2001-01-29 | 2001-01-30 | 75d |
| 96 |  | Fore Layer | 1d | 2001-01-31 | 2001-01-31 | 74d |
| 97 | 2.3.2 | **Scenery Objects** | 96d | 2000-10-16 | 2001-02-26 | 56d |
| 98 | 2.3.2.1 | **Platforms** | 14d | 2001-02-01 | 2001-02-20 | 60d |
| 99 | 2.3.2.1.1 | **Types** | 8d | 2001-02-01 | 2001-02-12 | 66d |
| 100 |  | Standard | 2d | 2001-02-01 | 2001-02-02 | 72d |
| 101 |  | Weighted | 2d | 2001-02-05 | 2001-02-06 | 70d |
| 102 |  | Destructible | 2d | 2001-02-07 | 2001-02-08 | 68d |
| 103 |  | See-Saw | 2d | 2001-02-09 | 2001-02-12 | 66d |
| 104 | 2.3.2.1.2 | **Motion** | 6d | 2001-02-13 | 2001-02-20 | 60d |
| 105 |  | Static | 2d | 2001-02-13 | 2001-02-14 | 64d |
| 106 |  | Linear Path | 2d | 2001-02-15 | 2001-02-16 | 62d |
| 107 |  | Circular Path | 2d | 2001-02-19 | 2001-02-20 | 60d |
| 108 | 2.3.2.2 | **Pick-ups** | 2d | 2001-02-21 | 2001-02-22 | 58d |
| 109 |  | Types | 2d | 2001-02-21 | 2001-02-22 | 58d |
| 110 | 2.3.2.3 | **Power-Ups** | 2d | 2001-02-23 | 2001-02-26 | 56d |
| 111 |  | Types | 2d | 2001-02-23 | 2001-02-26 | 56d |
| 112 | 2.3.2.4 | **Switches/Triggers** | 0d | 2000-10-16 | 2000-10-16 | 152d |
| 113 |  | Types | 0d | 2000-10-16 | 2000-10-16 | 152d |
| 114 | 2.3.3 | **Collision** | 0d | 2000-10-16 | 2000-10-16 | 152d |
| 115 |  | Actor 2 Actor | 0d | 2000-10-16 | 2000-10-16 | 152d |
| 116 |  | Actor 2 level | 0d | 2000-10-16 | 2000-10-16 | 152d |
| 117 | 2.3.4 | **In-Game GUI** | 10d | 2001-02-15 | 2001-02-28 | 54d |
| 118 |  | Level Map | 4d | 2001-02-15 | 2001-02-20 | 60d |
| 119 |  | Panel | 2d | 2001-02-21 | 2001-02-22 | 58d |
| 120 |  | Pause Menu | 4d | 2001-02-23 | 2001-02-28 | 54d |
| 121 | 2.3.5 | **Player Character** | 56d | 2001-02-27 | 2001-05-15 | 0d |
| 122 | 2.3.5.1 | **Control** | 42d | 2001-02-27 | 2001-04-25 | 14d |
| 123 | 2.3.5.1.1 | **States** | 42d | 2001-02-27 | 2001-04-25 | 14d |
| 124 | 2.3.5.1.1.1 | **Normal States** | 16d | 2001-02-27 | 2001-03-20 | 40d |
| 125 |  | Idle | 2d | 2001-02-27 | 2001-02-28 | 54d |
| 126 |  | Walk | 2d | 2001-03-01 | 2001-03-02 | 52d |
| 127 |  | Run | 2d | 2001-03-05 | 2001-03-06 | 50d |
| 128 |  | Jump | 2d | 2001-03-07 | 2001-03-08 | 48d |
| 129 |  | Fall/Land | 2d | 2001-03-09 | 2001-03-12 | 46d |
| 130 |  | Duck | 2d | 2001-03-13 | 2001-03-14 | 44d |
| 131 |  | Teeter | 2d | 2001-03-15 | 2001-03-16 | 42d |
| 132 |  | Misc | 2d | 2001-03-19 | 2001-03-20 | 40d |
| 133 | 2.3.5.1.1.2 | **Power-Up States** | 24d | 2001-03-21 | 2001-04-23 | 16d |
| 134 |  | Normal | 2d | 2001-03-21 | 2001-03-22 | 38d |
| 135 |  | Butt Bounce | 2d | 2001-03-23 | 2001-03-26 | 36d |
| 136 |  | Karate Chop | 2d | 2001-03-27 | 2001-03-28 | 34d |
| 137 |  | Net | 2d | 2001-03-29 | 2001-03-30 | 32d |
| 138 |  | Launcher | 2d | 2001-04-02 | 2001-04-03 | 30d |
| 139 |  | Coral Blower | 2d | 2001-04-04 | 2001-04-05 | 28d |
| 140 |  | Bubble Mixture | 2d | 2001-04-06 | 2001-04-09 | 26d |

| ID | WBS | Task | Duration | Start | Finish | Complete | Total float |
| --- | --- | --- | --- | --- | --- | --- | --- |
| 141 |  | Balloon | 2d | 2001-04-10 | 2001-04-11 |  | 24d |
| 142 |  | Diving Helmet | 2d | 2001-04-12 | 2001-04-13 |  | 22d |
| 143 |  | Glasses | 2d | 2001-04-16 | 2001-04-17 |  | 20d |
| 144 |  | Superhero Ring | 2d | 2001-04-18 | 2001-04-19 |  | 18d |
| 145 |  | Squeaky Boots | 2d | 2001-04-20 | 2001-04-23 |  | 16d |
| 146 | 2.3.5.1.1.3 | **Misc States** | 2d | 2001-04-24 | 2001-04-25 |  | 14d |
| 147 |  | Communicate | 2d | 2001-04-24 | 2001-04-25 |  | 14d |
| 148 | 2.3.5.2 | **Animation** | 14d | 2001-04-26 | 2001-05-15 |  | 0d |
| 149 | 2.3.5.2.1 | **Bone Animation System** | 4d | 2001-04-26 | 2001-05-01 |  | 10d |
| 150 |  | Interpolation of Animation | 2d | 2001-04-26 | 2001-04-27 |  | 12d |
| 151 |  | Anim DB | 2d | 2001-04-30 | 2001-05-01 |  | 10d |
| 152 | 2.3.5.2.2 | **Componented animation** | 10d | 2001-05-02 | 2001-05-15 |  | 0d |
| 153 |  | Head | 5d | 2001-05-02 | 2001-05-08 |  | 5d |
| 154 |  | Body | 1d | 2001-05-09 | 2001-05-09 |  | 4d |
| 155 |  | Arms | 1d | 2001-05-10 | 2001-05-10 |  | 3d |
| 156 |  | Hands | 1d | 2001-05-11 | 2001-05-11 |  | 2d |
| 157 |  | Legs | 1d | 2001-05-14 | 2001-05-14 |  | 1d |
| 158 |  | Feet | 1d | 2001-05-15 | 2001-05-15 |  | 0d |
| 159 | 2.3.5.3 | **Facial Expressions** | 5d | 2001-03-01 | 2001-03-07 |  | 49d |
| 160 |  | Features | 5d | 2001-03-01 | 2001-03-07 |  | 49d |
| 161 | 2.3.6 | **Communication** | 20d | 2001-03-08 | 2001-04-04 |  | 29d |
| 162 |  | Script system | 5d | 2001-03-08 | 2001-03-14 |  | 44d |
| 163 |  | Text to speech hooks | 5d | 2001-03-15 | 2001-03-21 |  | 39d |
| 164 |  | Question / response | 5d | 2001-03-22 | 2001-03-28 |  | 34d |
| 165 |  | Give item | 5d | 2001-03-29 | 2001-04-04 |  | 29d |
| 166 | 2.3.7 | **NPC** | 145d | 2000-10-16 | 2001-05-04 |  | 7d |
| 167 | 2.3.7.1 | **Friends** | 25d | 2000-10-16 | 2000-11-17 |  | 127d |
| 168 |  | Patrick Starfish | 4d | 2000-10-16 | 2000-10-19 |  | 148d |
| 169 |  | Squidward | 4d | 2000-10-20 | 2000-10-25 |  | 144d |
| 170 |  | Sandy | 4d | 2000-10-26 | 2000-10-31 |  | 140d |
| 171 |  | Mr Krabs | 4d | 2000-11-01 | 2000-11-06 |  | 136d |
| 172 |  | Plankton | 4d | 2000-11-07 | 2000-11-10 |  | 132d |
| 173 |  | Gary | 5d | 2000-11-13 | 2000-11-17 |  | 127d |
| 174 | 2.3.7.2 | **Enemies** | 90d | 2000-11-20 | 2001-03-23 |  | 37d |
| 175 |  | World 1 | 15d | 2000-11-20 | 2000-12-08 |  | 112d |
| 176 |  | World 2 | 15d | 2000-12-11 | 2000-12-29 |  | 97d |
| 177 |  | World 3 | 15d | 2001-01-01 | 2001-01-19 |  | 82d |
| 178 |  | World 4 | 15d | 2001-01-22 | 2001-02-09 |  | 67d |
| 179 |  | World 5 | 15d | 2001-02-12 | 2001-03-02 |  | 52d |
| 180 |  | World 6 | 15d | 2001-03-05 | 2001-03-23 |  | 37d |
| 181 | 2.3.7.3 | **Bosses** | 30d | 2001-03-26 | 2001-05-04 |  | 7d |
| 182 |  | World 1 | 5d | 2001-03-26 | 2001-03-30 |  | 32d |
| 183 |  | World 2 | 5d | 2001-04-02 | 2001-04-06 |  | 27d |
| 184 |  | World 3 | 5d | 2001-04-09 | 2001-04-13 |  | 22d |
| 185 |  | World 4 | 5d | 2001-04-16 | 2001-04-20 |  | 17d |
| 186 |  | World 5 | 5d | 2001-04-23 | 2001-04-27 |  | 12d |
| 187 |  | World 6 | 5d | 2001-04-30 | 2001-05-04 |  | 7d |
| 188 |  | Back-End | 5d | 2001-04-05 | 2001-04-11 |  | 24d |
| 189 | 2.5 | **Special Effects** | 10d | 2001-04-12 | 2001-04-25 |  | 14d |
| 190 | 2.5.1 | **Particles** | 5d | 2001-04-12 | 2001-04-18 |  | 19d |
| 191 |  | Bubbles | 5d | 2001-04-12 | 2001-04-18 |  | 19d |
| 192 | 2.5.2 | **Other Effects** | 5d | 2001-04-19 | 2001-04-25 |  | 14d |
| 193 |  | Bubble Fade | 5d | 2001-04-19 | 2001-04-25 |  | 14d |
| 195 | 3 | **MY Anim list, put here for my ref, not explicit for the prg sched** | 1d? | 2000-10-16 A | 2000-10-16 A | 100% |  |
| 196 | 3.1 | **Idle** | 1d? | 2000-10-16 A | 2000-10-16 A | 100% |  |
| 197 |  | IdleGeneric01 | 1d? | 2000-10-16 A | 2000-10-16 A | 100% |  |
| 198 |  | IdleGeneric02 | 1d? | 2000-10-16 A | 2000-10-16 A | 100% |  |
| 199 |  | IdleGeneric03 | 1d? | 2000-10-16 A | 2000-10-16 A | 100% |  |
| 200 |  | IdleGeneric04 | 1d? | 2000-10-16 A | 2000-10-16 A | 100% |  |
| 201 |  | IdleGeneric05 | 1d? | 2000-10-16 A | 2000-10-16 A | 100% |  |
| 202 |  | IdleGeneric06 | 1d? | 2000-10-16 A | 2000-10-16 A | 100% |  |
| 203 |  | IdleNet | 1d? | 2000-10-16 A | 2000-10-16 A | 100% |  |
| 204 |  | IdleLauncher | 1d? | 2000-10-16 A | 2000-10-16 A | 100% |  |
| 205 |  | IdleCoral | 1d? | 2000-10-16 A | 2000-10-16 A | 100% |  |
| 206 |  | IdleBoots | 1d? | 2000-10-16 A | 2000-10-16 A | 100% |  |
| 207 |  | Float | 1d? | 2000-10-16 A | 2000-10-16 A | 100% |  |
| 208 | 3.2 | **Movement** | 1d? | 2000-10-16 A | 2000-10-16 A | 100% |  |
| 209 | 3.2.1 | **Walk** | 1d? | 2000-10-16 A | 2000-10-16 A | 100% |  |
| 210 |  | WalkStart * | 1d? | 2000-10-16 A | 2000-10-16 A | 100% |  |
| 211 |  | WalkLoop | 1d? | 2000-10-16 A | 2000-10-16 A | 100% |  |

| ID | WBS | Task | Duration | Start | Finish | Complete |
| --- | --- | --- | --- | --- | --- | --- |
| 212 |  | WalkEnd * | 1d? | 2000-10-16 A | 2000-10-16 A | 100% |
| 213 |  | WalkTurn | 1d? | 2000-10-16 A | 2000-10-16 A | 100% |
| 214 | 3.2.2 | **Run** | 1d? | 2000-10-16 A | 2000-10-16 A | 100% |
| 215 |  | RunStart * | 1d? | 2000-10-16 A | 2000-10-16 A | 100% |
| 216 |  | RunLoop | 1d? | 2000-10-16 A | 2000-10-16 A | 100% |
| 217 |  | RunStop * | 1d? | 2000-10-16 A | 2000-10-16 A | 100% |
| 218 |  | RunTurn | 1d? | 2000-10-16 A | 2000-10-16 A | 100% |
| 219 | 3.2.3 | **Jump** | 1d? | 2000-10-16 A | 2000-10-16 A | 100% |
| 220 |  | JumpStart * | 1d? | 2000-10-16 A | 2000-10-16 A | 100% |
| 221 |  | JumpLoop | 1d? | 2000-10-16 A | 2000-10-16 A | 100% |
| 222 |  | JumpEnd * | 1d? | 2000-10-16 A | 2000-10-16 A | 100% |
| 223 |  | JumpTurn | 1d? | 2000-10-16 A | 2000-10-16 A | 100% |
| 224 | 3.2.4 | **Fall** | 1d? | 2000-10-16 A | 2000-10-16 A | 100% |
| 225 |  | FallLoop | 1d? | 2000-10-16 A | 2000-10-16 A | 100% |
| 226 |  | HitGround01 | 1d? | 2000-10-16 A | 2000-10-16 A | 100% |
| 227 |  | HitGround02 | 1d? | 2000-10-16 A | 2000-10-16 A | 100% |
| 228 |  | HitGround03 | 1d? | 2000-10-16 A | 2000-10-16 A | 100% |
| 229 | 3.2.5 | **Duck** | 1d? | 2000-10-16 A | 2000-10-16 A | 100% |
| 230 |  | DuckDown | 1d? | 2000-10-16 A | 2000-10-16 A | 100% |
| 231 |  | DuckLoop | 1d? | 2000-10-16 A | 2000-10-16 A | 100% |
| 232 |  | DuckUp | 1d? | 2000-10-16 A | 2000-10-16 A | 100% |
| 233 | 3.2.6 | **Teeter** | 1d? | 2000-10-16 A | 2000-10-16 A | 100% |
| 234 |  | TeeterFront | 1d? | 2000-10-16 A | 2000-10-16 A | 100% |
| 235 |  | TeeterBack | 1d? | 2000-10-16 A | 2000-10-16 A | 100% |
| 236 | 3.2.7 | **Misc** | 1d? | 2000-10-16 A | 2000-10-16 A | 100% |
| 237 |  | Look Up (Map Scroll) | 1d? | 2000-10-16 A | 2000-10-16 A | 100% |
| 238 |  | Hover | 1d? | 2000-10-16 A | 2000-10-16 A | 100% |
| 239 |  | Rebound * | 1d? | 2000-10-16 A | 2000-10-16 A | 100% |
| 240 |  | KnockBack * | 1d? | 2000-10-16 A | 2000-10-16 A | 100% |
| 241 |  | Knockforward * | 1d? | 2000-10-16 A | 2000-10-16 A | 100% |
| 242 | 3.3 | **Death/Damage** | 1d? | 2000-10-16 A | 2000-10-16 A | 100% |
| 243 |  | DeathGeneric | 1d? | 2000-10-16 A | 2000-10-16 A | 100% |
| 244 |  | DeathSquash | 1d? | 2000-10-16 A | 2000-10-16 A | 100% |
| 245 |  | DeathElectric | 1d? | 2000-10-16 A | 2000-10-16 A | 100% |
| 246 |  | DeathZap | 1d? | 2000-10-16 A | 2000-10-16 A | 100% |
| 247 |  | DeathTar | 1d? | 2000-10-16 A | 2000-10-16 A | 100% |
| 248 |  | DeathDry | 1d? | 2000-10-16 A | 2000-10-16 A | 100% |
| 249 |  | DeathFall | 1d? | 2000-10-16 A | 2000-10-16 A | 100% |
| 250 |  | ElectricShock | 1d? | 2000-10-16 A | 2000-10-16 A | 100% |
| 251 | 3.4 | **Attacks** | 1d? | 2000-10-16 A | 2000-10-16 A | 100% |
| 252 |  | ButtBounce | 1d? | 2000-10-16 A | 2000-10-16 A | 100% |
| 253 |  | Karate | 1d? | 2000-10-16 A | 2000-10-16 A | 100% |
| 254 |  | FireAim | 1d? | 2000-10-16 A | 2000-10-16 A | 100% |
| 255 |  | FireRecoil | 1d? | 2000-10-16 A | 2000-10-16 A | 100% |
| 256 |  | NetSwipe | 1d? | 2000-10-16 A | 2000-10-16 A | 100% |
| 257 |  | NetSwipeJump | 1d? | 2000-10-16 A | 2000-10-16 A | 100% |
| 258 |  | NetShoot | 1d? | 2000-10-16 A | 2000-10-16 A | 100% |
| 259 |  | NetShootJump | 1d? | 2000-10-16 A | 2000-10-16 A | 100% |
| 260 |  | Whirlwind | 1d? | 2000-10-16 A | 2000-10-16 A | 100% |
| 261 | 3.5 | **Misc** | 1d? | 2000-10-16 A | 2000-10-16 A | 100% |
| 262 |  | Wakeup | 1d? | 2000-10-16 A | 2000-10-16 A | 100% |
| 263 |  | Talk | 1d? | 2000-10-16 A | 2000-10-16 A | 100% |

## Version 2 (saved 2000-11-15, file CodeMilestones.mpp)

Note of the change: SBSP/Disc 1 in PSX

Last finish 2001-05-15 → 2001-10-04 (+142d). Complete tasks 56 → 0.

Added:

| ID | Task | Duration | Start | Finish | Resources |
| --- | --- | --- | --- | --- | --- |
| 2 | Milestone 1 | 0d | 2000-10-16 | 2000-10-16 |  |
| 4 | Milestone 2 - 16/10/00 | 0d | 2000-10-16 | 2000-10-16 |  |
| 6 | **Milestone 3 - 13/11/00** | 21d | 2000-10-16 | 2000-11-13 |  |
| 7 | **Dave Owens** | 21d | 2000-10-16 | 2000-11-13 |  |
| 40 | **Charles Balir** | 20d | 2000-10-16 | 2000-11-10 |  |
| 41 | Initial AI designs | 20d | 2000-10-16 | 2000-11-10 | Charles Blair |
| 42 | **Paul Grenfel** | 20d | 2000-10-16 | 2000-11-10 |  |
| 56 | **Milestone 4 - 11/12/00** | 22d | 2000-11-13 | 2000-12-12 |  |
| 57 | **Dave Owens** | 21d | 2000-11-14 | 2000-12-12 |  |
| 58 | **Map Editor** | 15d | 2000-11-14 | 2000-12-04 |  |
| 62 | **Output** | 2d | 2000-11-21 | 2000-11-22 |  |
| 63 | **PSX Data** | 1d | 2000-11-21 | 2000-11-21 |  |
| 64 | **Map Data** | 1d | 2000-11-21 | 2000-11-21 |  |
| 66 | **AGB Data** | 1d | 2000-11-22 | 2000-11-22 |  |
| 67 | **Map Data** | 1d | 2000-11-22 | 2000-11-22 |  |
| 69 | **Edit Functions** | 8d | 2000-11-23 | 2000-12-04 |  |
| 75 | **Layers** | 6d | 2000-12-05 | 2000-12-12 |  |
| 82 | **Charles Balir** | 20d | 2000-11-13 | 2000-12-08 |  |
| 83 | Final AI designs | 20d | 2000-11-13 | 2000-12-08 | Charles Blair |
| 84 | **Paul Grenfel** | 22d | 2000-11-13 | 2000-12-12 |  |
| 102 | **Milestone 5 - 15/01/01** | 25d | 2000-12-11 | 2001-01-12 |  |
| 103 | **Dave Owens** | 23d | 2000-12-13 | 2001-01-12 |  |
| 124 | **Charles Balir** | 25d | 2000-12-11 | 2001-01-12 |  |
| 131 | **World1** | 15d | 2000-12-25 | 2001-01-12 |  |
| 132 | Enemies | 10d | 2000-12-25 | 2001-01-05 | Charles Blair |
| 133 | Boss | 5d | 2001-01-08 | 2001-01-12 | Charles Blair |
| 134 | **Paul Grenfel** | 23d | 2000-12-13 | 2001-01-12 |  |
| 143 | **Audio** | 2d | 2001-01-11 | 2001-01-12 |  |
| 146 | **Milestone 6 - 12/02/01** | 21d | 2001-01-15 | 2001-02-12 |  |
| 147 | **Dave Owens** | 21d | 2001-01-15 | 2001-02-12 |  |
| 150 | **Data Layers** | 5d | 2001-01-15 | 2001-01-19 |  |
| 152 | **Output** | 2d | 2001-01-22 | 2001-01-23 |  |
| 153 | **PSX Data** | 1d | 2001-01-22 | 2001-01-22 |  |
| 154 | **Map Data** | 1d | 2001-01-22 | 2001-01-22 |  |
| 156 | **AGB Data** | 1d | 2001-01-23 | 2001-01-23 |  |
| 157 | **Map Data** | 1d | 2001-01-23 | 2001-01-23 |  |
| 159 | **Normal States** | 6d | 2001-01-24 | 2001-01-31 |  |
| 168 | **Charles Balir** | 20d | 2001-01-15 | 2001-02-09 |  |
| 169 | **NPC** | 20d | 2001-01-15 | 2001-02-09 |  |
| 171 | **World2** | 15d | 2001-01-22 | 2001-02-09 |  |
| 172 | Enemies | 10d | 2001-01-22 | 2001-02-02 | Charles Blair |
| 173 | Boss | 5d | 2001-02-05 | 2001-02-09 | Charles Blair |
| 174 | **Paul Grenfel** | 20d | 2001-01-15 | 2001-02-09 |  |
| 179 | **Milestone 7 - 12/03/01** | 21d | 2001-02-12 | 2001-03-12 |  |
| 180 | **Dave Owens** | 20d | 2001-02-13 | 2001-03-12 |  |
| 181 | **Map Editor - Platforms/Items** | 6d | 2001-02-13 | 2001-02-20 |  |
| 182 | **Layers** | 4d | 2001-02-13 | 2001-02-16 |  |
| 183 | **Data Layers** | 4d | 2001-02-13 | 2001-02-16 |  |
| 186 | **Output** | 2d | 2001-02-19 | 2001-02-20 |  |
| 187 | **PSX Data** | 1d | 2001-02-19 | 2001-02-19 |  |
| 188 | **Map Data** | 1d | 2001-02-19 | 2001-02-19 |  |
| 189 | Platform Data/Item Data | 1d | 2001-02-19 | 2001-02-19 | Dave Owens |
| 190 | **AGB Data** | 1d | 2001-02-20 | 2001-02-20 |  |
| 191 | **Map Data** | 1d | 2001-02-20 | 2001-02-20 |  |
| 192 | Platform Data/Item Data | 1d | 2001-02-20 | 2001-02-20 | Dave Owens |
| 207 | **Charles Balir** | 20d | 2001-02-12 | 2001-03-09 |  |
| 208 | **NPC** | 20d | 2001-02-12 | 2001-03-09 |  |
| 209 | **World3** | 15d | 2001-02-12 | 2001-03-02 |  |
| 210 | Enemies | 10d | 2001-02-12 | 2001-02-23 | Charles Blair |
| 211 | Boss | 5d | 2001-02-26 | 2001-03-02 | Charles Blair |
| 212 | **World4** | 5d | 2001-03-05 | 2001-03-09 |  |
| 213 | Enemies | 5d | 2001-03-05 | 2001-03-09 | Charles Blair |
| 214 | **Paul Grenfel** | 21d | 2001-02-12 | 2001-03-12 |  |
| 230 | **Milestone 8 - 09/04/01** | 21d | 2001-03-12 | 2001-04-09 |  |
| 231 | **Dave Owens** | 16d | 2001-03-13 | 2001-04-03 |  |
| 232 | **Player Character** | 16d | 2001-03-13 | 2001-04-03 |  |
| 233 | **Control** | 16d | 2001-03-13 | 2001-04-03 |  |
| 234 | **States** | 16d | 2001-03-13 | 2001-04-03 |  |
| 235 | **Power-Up States** | 14d | 2001-03-13 | 2001-03-30 |  |
| 245 | **Charles Balir** | 20d | 2001-03-12 | 2001-04-06 |  |
| 246 | **NPC** | 20d | 2001-03-12 | 2001-04-06 |  |
| 247 | **World4** | 10d | 2001-03-12 | 2001-03-23 |  |
| 248 | Enemies | 5d | 2001-03-12 | 2001-03-16 | Charles Blair |
| 249 | Boss | 5d | 2001-03-19 | 2001-03-23 | Charles Blair |
| 250 | **World5** | 10d | 2001-03-26 | 2001-04-06 |  |
| 251 | Enemies | 10d | 2001-03-26 | 2001-04-06 | Charles Blair |
| 252 | **Paul Grenfel** | 20d | 2001-03-13 | 2001-04-09 |  |
| 255 | **Milestone 9 - 07/05/01 - E3** | 24d | 2001-04-04 | 2001-05-07 |  |
| 256 | **Dave Owens** | 20d | 2001-04-04 | 2001-05-01 |  |
| 257 | Bug Fixes & Tweaking | 20d | 2001-04-04 | 2001-05-01 | Dave Owens |
| 258 | **Charles Balir** | 20d | 2001-04-09 | 2001-05-04 |  |
| 259 | **NPC** | 20d | 2001-04-09 | 2001-05-04 |  |
| 260 | **World5** | 5d | 2001-04-09 | 2001-04-13 |  |
| 261 | Boss | 5d | 2001-04-09 | 2001-04-13 | Charles Blair |
| 262 | **World6** | 15d | 2001-04-16 | 2001-05-04 |  |
| 263 | Enemies | 10d | 2001-04-16 | 2001-04-27 | Charles Blair |
| 264 | Boss | 5d | 2001-04-30 | 2001-05-04 | Charles Blair |
| 265 | **Paul Grenfel** | 20d | 2001-04-10 | 2001-05-07 |  |
| 266 | Bug Fixes & Tweaking | 20d | 2001-04-10 | 2001-05-07 | Paul Grenfell |
| 268 | **Milestone 10 - 11/06/01 - Alpha** | 24d | 2001-05-02 | 2001-06-04 |  |
| 269 | **Dave Owens** | 20d | 2001-05-02 | 2001-05-29 |  |
| 270 | Bug Fixes & Tweaking | 20d | 2001-05-02 | 2001-05-29 | Dave Owens |
| 271 | **Charles Balir** | 20d | 2001-05-07 | 2001-06-01 |  |
| 272 | Bug Fixes & Tweaking | 20d | 2001-05-07 | 2001-06-01 | Charles Blair |
| 273 | **Paul Grenfel** | 20d | 2001-05-08 | 2001-06-04 |  |
| 274 | Bug Fixes & Tweaking | 20d | 2001-05-08 | 2001-06-04 | Paul Grenfell |
| 276 | **Milestone 11 - 09/07/01 - Beta** | 24d | 2001-05-30 | 2001-07-02 |  |
| 277 | **Dave Owens** | 20d | 2001-05-30 | 2001-06-26 |  |
| 278 | Bug Fixes & Tweaking | 20d | 2001-05-30 | 2001-06-26 | Dave Owens |
| 279 | **Charles Balir** | 20d | 2001-06-04 | 2001-06-29 |  |
| 280 | Bug Fixes & Tweaking | 20d | 2001-06-04 | 2001-06-29 | Charles Blair |
| 281 | **Paul Grenfel** | 20d | 2001-06-05 | 2001-07-02 |  |
| 282 | Bug Fixes & Tweaking | 20d | 2001-06-05 | 2001-07-02 | Paul Grenfell |
| 284 | **Milestone 12 - 08/08/01 - NTSC USA Final** | 24d | 2001-06-27 | 2001-07-30 |  |
| 285 | **Dave Owens** | 20d | 2001-06-27 | 2001-07-24 |  |
| 286 | Bug Fixes & Tweaking | 20d | 2001-06-27 | 2001-07-24 | Dave Owens |
| 287 | **Charles Balir** | 20d | 2001-07-02 | 2001-07-27 |  |
| 288 | Bug Fixes & Tweaking | 20d | 2001-07-02 | 2001-07-27 | Charles Blair |
| 289 | **Paul Grenfel** | 20d | 2001-07-03 | 2001-07-30 |  |
| 290 | Bug Fixes & Tweaking | 20d | 2001-07-03 | 2001-07-30 | Paul Grenfell |
| 292 | **Milestone 13 - 27/08/01 - PAL English Final** | 10d | 2001-07-25 | 2001-08-07 |  |
| 293 | **Dave Owens** | 10d | 2001-07-25 | 2001-08-07 |  |
| 294 | PAL Code issues | 10d | 2001-07-25 | 2001-08-07 | Dave Owens |
| 296 | **Milestone 14 - 10/09/01 - PAL German Final** | 10d | 2001-08-08 | 2001-08-21 |  |
| 297 | **Dave Owens** | 10d | 2001-08-08 | 2001-08-21 |  |
| 298 | Implement localised version | 5d | 2001-08-08 | 2001-08-14 | Dave Owens |
| 299 | Localisation code issues | 5d | 2001-08-15 | 2001-08-21 | Dave Owens |
| 301 | **Milestone 15 - 24/09/01 - PAL French Final** | 10d | 2001-08-22 | 2001-09-04 |  |
| 302 | **Dave Owens** | 10d | 2001-08-22 | 2001-09-04 |  |
| 303 | Implement localised version | 5d | 2001-08-22 | 2001-08-28 | Dave Owens |
| 304 | Localisation code issues | 5d | 2001-08-29 | 2001-09-04 | Dave Owens |
| 306 | **Milestone 16 - 10/10/01 - PAL TBD Final** | 10d | 2001-09-05 | 2001-09-18 |  |
| 307 | **Dave Owens** | 10d | 2001-09-05 | 2001-09-18 |  |
| 311 | **Milestone 17 - 22/10/01 - PAL TBD Final** | 10d | 2001-09-19 | 2001-10-02 |  |
| 314 | Localisation code issues | 5d | 2001-09-26 | 2001-10-02 | Dave Owens |
| 316 | **Milestone 18 - 15/11/01 - Archive** | 2d | 2001-10-03 | 2001-10-04 |  |
| 317 | **Dave Owens** | 2d | 2001-10-03 | 2001-10-04 |  |

Removed: 28 Platform Data; 30 Item Data; 38 Platform Data; 40 Item Data; 48 Undo/Redo; 51 Project; 90 Game; 97 Scenery Objects; 114 Collision; 115 Actor 2 Actor; 116 Actor 2 level; 134 Normal; 167 Friends; 174 Enemies; 175 World 1; 176 World 2; 177 World 3; 178 World 4; 179 World 5; 180 World 6; 181 Bosses; 182 World 1; 183 World 2; 184 World 3; 185 World 4; 186 World 5; 187 World 6; 195 MY Anim list, put here for my ref, not explicit for the prg sched; 196 Idle; 197 IdleGeneric01; 198 IdleGeneric02; 199 IdleGeneric03; 200 IdleGeneric04; 201 IdleGeneric05; 202 IdleGeneric06; 203 IdleNet; 204 IdleLauncher; 205 IdleCoral; 206 IdleBoots; 207 Float; 208 Movement; 209 Walk; 210 WalkStart *; 211 WalkLoop; 212 WalkEnd *; 213 WalkTurn; 214 Run; 215 RunStart *; 216 RunLoop; 217 RunStop *; 218 RunTurn; 219 Jump; 220 JumpStart *; 221 JumpLoop; 222 JumpEnd *; 223 JumpTurn; 224 Fall; 225 FallLoop; 226 HitGround01; 227 HitGround02; 228 HitGround03; 229 Duck; 230 DuckDown; 231 DuckLoop; 232 DuckUp; 233 Teeter; 234 TeeterFront; 235 TeeterBack; 236 Misc; 237 Look Up (Map Scroll); 238 Hover; 239 Rebound *; 240 KnockBack *; 241 Knockforward *; 242 Death/Damage; 243 DeathGeneric; 244 DeathSquash; 245 DeathElectric; 246 DeathZap; 247 DeathTar; 248 DeathDry; 249 DeathFall; 251 Attacks; 252 ButtBounce; 256 NetSwipe; 257 NetSwipeJump; 259 NetShootJump; 261 Misc; 263 Talk

Changed:

| ID | Task | Start | Finish | Duration | Total float |
| --- | --- | --- | --- | --- | --- |
| 8 | **Map Editor** |  | 2001-01-22 → 2000-11-13 (-70d) | 71d → 21d | 81d → 0d |
| 9 | Core Functionality |  | 2000-10-20 → 2000-10-18 (-2d) | 5d → 3d | 147d → 18d |
| 10 | **Layers** | 2000-10-23 → 2000-10-19 (-4d) | 2000-11-29 → 2000-10-24 (-36d) | 28d → 4d | 119d → 14d |
| 11 | **Gfx Layers** | 2000-10-23 → 2000-10-19 (-4d) | 2000-11-01 → 2000-10-24 (-8d) | 8d → 4d | 139d → 14d |
| 12 | Background Layer | 2000-10-23 → 2000-10-19 (-4d) | 2000-10-24 → 2000-10-19 (-5d) | 2d → 1d | 145d → 17d |
| 13 | Mid Layer | 2000-10-25 → 2000-10-20 (-5d) | 2000-10-26 → 2000-10-20 (-6d) | 2d → 1d | 143d → 16d |
| 14 | Action Layer | 2000-10-27 → 2000-10-23 (-4d) | 2000-10-30 → 2000-10-23 (-7d) | 2d → 1d | 141d → 15d |
| 15 | Fore Layer | 2000-10-31 → 2000-10-24 (-7d) | 2000-11-01 → 2000-10-24 (-8d) | 2d → 1d | 139d → 14d |
| 16 | **Tile Bank** | 2000-11-30 → 2000-10-25 (-36d) | 2000-12-06 → 2000-10-30 (-37d) | 5d → 4d | 114d → 10d |
| 17 | **Tile Set** | 2000-11-30 → 2000-10-25 (-36d) | 2000-12-06 → 2000-10-30 (-37d) | 5d → 4d | 114d → 10d |
| 18 | Core | 2000-11-30 → 2000-10-25 (-36d) | 2000-12-05 → 2000-10-27 (-39d) | 4d → 3d | 115d → 11d |
| 19 | GUI | 2000-12-06 → 2000-10-30 (-37d) | 2000-12-06 → 2000-10-30 (-37d) |  | 114d → 10d |
| 20 | **Map Data** | 2000-12-07 → 2000-10-31 (-37d) | 2000-12-08 → 2000-10-31 (-38d) | 2d → 1d | 112d → 9d |
| 21 | Core | 2000-12-07 → 2000-10-31 (-37d) | 2000-12-08 → 2000-10-31 (-38d) | 2d → 1d | 112d → 9d |
| 22 | **Project** | 2000-12-11 → 2000-11-01 (-40d) | 2000-12-14 → 2000-11-02 (-42d) | 4d → 2d | 108d → 7d |
| 23 | Load Project | 2000-12-11 → 2000-11-01 (-40d) | 2000-12-12 → 2000-11-01 (-41d) | 2d → 1d | 110d → 8d |
| 24 | Save Project | 2000-12-13 → 2000-11-02 (-41d) | 2000-12-14 → 2000-11-02 (-42d) | 2d → 1d | 108d → 7d |
| 25 | **Output** | 2000-12-15 → 2000-11-03 (-42d) | 2001-01-02 → 2000-11-09 (-54d) | 13d → 5d | 95d → 2d |
| 26 | **PSX Data** | 2000-12-15 → 2000-11-03 (-42d) | 2000-12-25 → 2000-11-07 (-48d) | 7d → 3d | 101d → 4d |
| 27 | **Map Data** | 2000-12-15 → 2000-11-03 (-42d) | 2000-12-21 → 2000-11-03 (-48d) | 5d → 1d | 103d → 6d |
| 28 | Level Data | 2000-12-15 → 2000-11-03 (-42d) | 2000-12-15 → 2000-11-03 (-42d) |  | 107d → 6d |
| 29 | **Tile Data** | 2000-12-22 → 2000-11-06 (-46d) | 2000-12-25 → 2000-11-07 (-48d) |  | 101d → 4d |
| 30 | Tile Blocks | 2000-12-22 → 2000-11-06 (-46d) | 2000-12-22 → 2000-11-06 (-46d) |  | 102d → 5d |
| 31 | Textures | 2000-12-25 → 2000-11-07 (-48d) | 2000-12-25 → 2000-11-07 (-48d) |  | 101d → 4d |
| 32 | **AGB Data** | 2000-12-26 → 2000-11-08 (-48d) | 2001-01-02 → 2000-11-09 (-54d) | 6d → 2d | 95d → 2d |
| 33 | **Map Data** | 2000-12-26 → 2000-11-08 (-48d) | 2001-01-01 → 2000-11-08 (-54d) | 5d → 1d | 96d → 3d |
| 34 | Level Data | 2000-12-26 → 2000-11-08 (-48d) | 2000-12-26 → 2000-11-08 (-48d) |  | 100d → 3d |
| 35 | **Tile Data** | 2001-01-02 → 2000-11-09 (-54d) | 2001-01-02 → 2000-11-09 (-54d) |  | 95d → 2d |
| 36 | Textures | 2001-01-02 → 2000-11-09 (-54d) | 2001-01-02 → 2000-11-09 (-54d) |  | 95d → 2d |
| 37 | **Edit Functions** | 2001-01-03 → 2000-11-10 (-54d) | 2001-01-22 → 2000-11-13 (-70d) | 14d → 2d | 81d → 0d |
| 38 | Paint | 2001-01-03 → 2000-11-10 (-54d) | 2001-01-04 → 2000-11-10 (-55d) | 2d → 1d | 93d → 1d |
| 39 | Tile Mirror | 2001-01-17 → 2000-11-13 (-65d) | 2001-01-18 → 2000-11-13 (-66d) | 2d → 1d | 83d → 0d |
| 43 | **System Code** |  | 2001-01-24 → 2000-11-01 (-84d) | 73d → 13d | 79d → 8d |
| 50 | Localisation Database |  | 2000-11-06 → 2000-11-01 (-5d) | 5d → 2d | 136d → 8d |
| 51 | **Audio** | 2000-11-07 → 2000-11-02 (-5d) | 2001-01-24 → 2000-11-10 (-75d) | 57d → 7d | 79d → 1d |
| 52 | PSX Audio Driver | 2000-11-07 → 2000-11-02 (-5d) | 2000-11-10 → 2000-11-06 (-4d) | 4d → 3d | 132d → 5d |
| 53 | Music | 2000-11-13 → 2000-11-07 (-6d) | 2000-11-15 → 2000-11-08 (-7d) | 3d → 2d | 129d → 3d |
| 54 | Samples | 2000-11-16 → 2000-11-09 (-7d) | 2000-11-20 → 2000-11-10 (-10d) | 3d → 2d | 126d → 1d |
| 59 | **Layers** | 2001-01-25 → 2000-11-14 (-72d) | 2001-01-31 → 2000-11-20 (-72d) |  | 74d → 16d |
| 60 | **Data Layers** | 2000-11-02 → 2000-11-14 (+12d) | 2000-11-29 → 2000-11-20 (-9d) | 20d → 5d | 119d → 16d |
| 61 | Collision Layer | 2000-11-02 → 2000-11-14 (+12d) | 2000-11-08 → 2000-11-20 (+12d) |  | 134d → 16d |
| 65 | Collision Data | 2000-12-18 → 2000-11-21 (-27d) | 2000-12-18 → 2000-11-21 (-27d) |  | 106d → 15d |
| 68 | Collision Data | 2000-12-27 → 2000-11-22 (-35d) | 2000-12-27 → 2000-11-22 (-35d) |  | 99d → 14d |
| 70 | Bounding Box Selection | 2001-01-05 → 2000-11-23 (-43d) | 2001-01-08 → 2000-11-24 (-45d) |  | 91d → 12d |
| 71 | Copy/Cut | 2001-01-09 → 2000-11-27 (-43d) | 2001-01-10 → 2000-11-28 (-43d) |  | 89d → 10d |
| 72 | Paste | 2001-01-11 → 2000-11-29 (-43d) | 2001-01-12 → 2000-11-30 (-43d) |  | 87d → 8d |
| 73 | Eye Dropper | 2001-01-19 → 2000-12-01 (-49d) | 2001-01-22 → 2000-12-04 (-49d) |  | 81d → 6d |
| 74 | **Level** | 2001-01-25 → 2000-12-05 (-51d) | 2001-01-31 → 2000-12-12 (-50d) | 5d → 6d | 74d → 0d |
| 76 | Background Layer | 2001-01-25 → 2000-12-05 (-51d) | 2001-01-25 → 2000-12-05 (-51d) |  | 78d → 5d |
| 77 | Mid Layer | 2001-01-26 → 2000-12-06 (-51d) | 2001-01-26 → 2000-12-06 (-51d) |  | 77d → 4d |
| 78 | Action Layer | 2001-01-29 → 2000-12-07 (-53d) | 2001-01-30 → 2000-12-08 (-53d) |  | 75d → 2d |
| 79 | Fore Layer | 2001-01-31 → 2000-12-11 (-51d) | 2001-01-31 → 2000-12-11 (-51d) |  | 74d → 1d |
| 80 | **Switches/Triggers** | 2000-10-16 → 2000-12-12 (+57d) | 2000-10-16 → 2000-12-12 (+57d) | 0d → 1d | 152d → 0d |
| 81 | Types | 2001-02-21 → 2000-12-12 (-71d) | 2001-02-22 → 2000-12-12 (-72d) | 2d → 1d | 58d → 0d |
| 85 | **GUI Handler** | 2000-12-19 → 2000-11-13 (-36d) | 2001-01-11 → 2000-12-12 (-30d) | 18d → 22d | 88d → 0d |
| 86 | **GUI Components (Generic)** | 2000-12-19 → 2000-11-13 (-36d) | 2001-01-11 → 2000-12-06 (-36d) |  | 88d → 4d |
| 87 | Parent Frame | 2000-12-19 → 2000-11-13 (-36d) | 2000-12-20 → 2000-11-14 (-36d) |  | 104d → 20d |
| 88 | Child Frame | 2000-12-21 → 2000-11-15 (-36d) | 2000-12-22 → 2000-11-16 (-36d) |  | 102d → 18d |
| 89 | Textbox | 2000-12-25 → 2000-11-17 (-38d) | 2000-12-26 → 2000-11-20 (-36d) |  | 100d → 16d |
| 90 | EditBox | 2000-12-27 → 2000-11-21 (-36d) | 2000-12-28 → 2000-11-22 (-36d) |  | 98d → 14d |
| 91 | Buttons | 2000-12-29 → 2000-11-23 (-36d) | 2001-01-01 → 2000-11-24 (-38d) |  | 96d → 12d |
| 92 | Bitmap | 2001-01-02 → 2000-11-27 (-36d) | 2001-01-03 → 2000-11-28 (-36d) |  | 94d → 10d |
| 93 | Vertical Scroll Bar | 2001-01-04 → 2000-11-29 (-36d) | 2001-01-05 → 2000-11-30 (-36d) |  | 92d → 8d |
| 94 | Horizontal Scroll Bar | 2001-01-08 → 2000-12-01 (-38d) | 2001-01-09 → 2000-12-04 (-36d) |  | 90d → 6d |
| 95 | Spinner | 2001-01-10 → 2000-12-05 (-36d) | 2001-01-11 → 2000-12-06 (-36d) |  | 88d → 4d |
| 96 | **Special Effects** | 2001-04-12 → 2000-12-07 (-126d) | 2001-04-25 → 2000-12-12 (-134d) | 10d → 4d | 14d → 0d |
| 97 | **Particles** | 2001-04-12 → 2000-12-07 (-126d) | 2001-04-18 → 2000-12-08 (-131d) | 5d → 2d | 19d → 2d |
| 98 | Bubbles | 2001-04-12 → 2000-12-07 (-126d) | 2001-04-18 → 2000-12-08 (-131d) | 5d → 2d | 19d → 2d |
| 99 | **Other Effects** | 2001-04-19 → 2000-12-11 (-129d) | 2001-04-25 → 2000-12-12 (-134d) | 5d → 2d | 14d → 0d |
| 100 | Bubble Fade | 2001-04-19 → 2000-12-11 (-129d) | 2001-04-25 → 2000-12-12 (-134d) | 5d → 2d | 14d → 0d |

| ID | Task | Start | Finish | Duration | Complete | Total float | Other |
| --- | --- | --- | --- | --- | --- | --- | --- |
| 104 | **Player Character** | 2001-02-27 → 2000-12-13 (-76d) | 2001-05-15 → 2001-01-12 (-123d) | 56d → 23d |  | 0d → 1d |  |
| 105 | **Control** | 2001-02-27 → 2000-12-13 (-76d) | 2001-04-25 → 2000-12-19 (-127d) | 42d → 5d |  | 14d → 19d |  |
| 106 | **States** | 2001-02-27 → 2000-12-13 (-76d) | 2001-04-25 → 2000-12-19 (-127d) | 42d → 5d |  | 14d → 19d |  |
| 107 | **Normal States** | 2001-02-27 → 2000-12-13 (-76d) | 2001-03-20 → 2000-12-19 (-91d) | 16d → 5d |  | 40d → 19d |  |
| 108 | Idle | 2001-02-27 → 2000-12-13 (-76d) | 2001-02-28 → 2000-12-13 (-77d) | 2d → 1d |  | 54d → 23d |  |
| 109 | Run | 2001-03-05 → 2000-12-14 (-81d) | 2001-03-06 → 2000-12-14 (-82d) | 2d → 1d |  | 50d → 22d |  |
| 110 | Jump | 2001-03-07 → 2000-12-15 (-82d) | 2001-03-08 → 2000-12-15 (-83d) | 2d → 1d |  | 48d → 21d |  |
| 111 | Fall/Land | 2001-03-09 → 2000-12-18 (-81d) | 2001-03-12 → 2000-12-18 (-84d) | 2d → 1d |  | 46d → 20d |  |
| 112 | Duck | 2001-03-13 → 2000-12-19 (-84d) | 2001-03-14 → 2000-12-19 (-85d) | 2d → 1d |  | 44d → 19d |  |
| 113 | **Animation** | 2001-04-26 → 2000-12-20 (-127d) | 2001-05-15 → 2001-01-12 (-123d) | 14d → 18d |  | 0d → 1d |  |
| 114 | **Bone Animation System** | 2001-04-26 → 2000-12-20 (-127d) | 2001-05-01 → 2000-12-22 (-130d) | 4d → 3d |  | 10d → 16d |  |
| 115 | Interpolation of Animation | 2001-04-26 → 2000-12-20 (-127d) | 2001-04-27 → 2000-12-21 (-127d) |  |  | 12d → 17d |  |
| 116 | Anim DB | 2001-04-30 → 2000-12-22 (-129d) | 2001-05-01 → 2000-12-22 (-130d) | 2d → 1d |  | 10d → 16d |  |
| 117 | **Componented animation** | 2001-05-02 → 2000-12-25 (-128d) | 2001-05-15 → 2001-01-12 (-123d) | 10d → 15d |  | 0d → 1d |  |
| 118 | Head | 2001-05-02 → 2000-12-25 (-128d) | 2001-05-08 → 2000-12-29 (-130d) |  |  | 5d → 11d |  |
| 119 | Body | 2001-05-09 → 2001-01-01 (-128d) | 2001-05-09 → 2001-01-02 (-127d) | 1d → 2d |  | 4d → 9d |  |
| 120 | Arms | 2001-05-10 → 2001-01-03 (-127d) | 2001-05-10 → 2001-01-04 (-126d) | 1d → 2d |  | 3d → 7d |  |
| 121 | Hands | 2001-05-11 → 2001-01-05 (-126d) | 2001-05-11 → 2001-01-08 (-123d) | 1d → 2d |  | 2d → 5d |  |
| 122 | Legs | 2001-05-14 → 2001-01-09 (-125d) | 2001-05-14 → 2001-01-10 (-124d) | 1d → 2d |  | 1d → 3d |  |
| 123 | Feet | 2001-05-15 → 2001-01-11 (-124d) | 2001-05-15 → 2001-01-12 (-123d) | 1d → 2d |  | 0d → 1d |  |
| 125 | **NPC** | 2000-10-16 → 2000-12-11 (+56d) | 2001-05-04 → 2001-01-12 (-112d) | 145d → 25d |  | 7d → 1d |  |
| 126 | Patrick Starfish | 2000-10-16 → 2000-12-11 (+56d) | 2000-10-19 → 2000-12-12 (+54d) | 4d → 2d |  | 148d → 24d |  |
| 127 | Sandy | 2000-10-26 → 2000-12-13 (+48d) | 2000-10-31 → 2000-12-14 (+44d) | 4d → 2d |  | 140d → 22d |  |
| 128 | Mr Krabs | 2000-11-01 → 2000-12-15 (+44d) | 2000-11-06 → 2000-12-18 (+42d) | 4d → 2d |  | 136d → 20d |  |
| 129 | Squidward | 2000-10-20 → 2000-12-19 (+60d) | 2000-10-25 → 2000-12-20 (+56d) | 4d → 2d |  | 144d → 18d |  |
| 130 | Plankton | 2000-11-07 → 2000-12-21 (+44d) | 2000-11-10 → 2000-12-22 (+42d) | 4d → 2d |  | 132d → 16d |  |
| 135 | Back-End | 2001-04-05 → 2000-12-13 (-113d) | 2001-04-11 → 2000-12-19 (-113d) |  |  | 24d → 19d |  |
| 136 | **Facial Expressions** | 2001-03-01 → 2000-12-20 (-71d) | 2001-03-07 → 2000-12-26 (-71d) |  |  | 49d → 14d |  |
| 137 | Features | 2001-03-01 → 2000-12-20 (-71d) | 2001-03-07 → 2000-12-26 (-71d) |  |  | 49d → 14d |  |
| 138 | **Communication** | 2001-03-08 → 2000-12-27 (-71d) | 2001-04-04 → 2001-01-10 (-84d) | 20d → 11d |  | 29d → 3d |  |
| 139 | Script system | 2001-03-08 → 2000-12-27 (-71d) | 2001-03-14 → 2001-01-02 (-71d) |  |  | 44d → 9d |  |
| 140 | Text to speech hooks | 2001-03-15 → 2001-01-03 (-71d) | 2001-03-21 → 2001-01-04 (-76d) | 5d → 2d |  | 39d → 7d |  |
| 141 | Question / response | 2001-03-22 → 2001-01-05 (-76d) | 2001-03-28 → 2001-01-08 (-79d) | 5d → 2d |  | 34d → 5d |  |
| 142 | Give item | 2001-03-29 → 2001-01-09 (-79d) | 2001-04-04 → 2001-01-10 (-84d) | 5d → 2d |  | 29d → 3d |  |
| 144 | Speech | 2001-01-23 → 2001-01-11 (-12d) | 2001-01-24 → 2001-01-12 (-12d) |  |  | 79d → 1d | resources Dave Owens → Paul Grenfell |
| 148 | **Map Editor - NPC** | 2000-10-16 A → 2001-01-15 (+91d) | 2000-10-16 A → 2001-01-23 (+99d) | 1d? → 7d | 100% → 0% | none → 14d | was named Wakeup |
| 149 | **Layers** | 2000-10-16 A → 2001-01-15 (+91d) | 2000-10-16 A → 2001-01-19 (+95d) | 1d? → 5d | 100% → 0% | none → 16d | was named ElectricShock |
| 151 | NPC Layer | 2000-11-16 → 2001-01-15 (+60d) | 2000-11-22 → 2001-01-19 (+58d) |  |  | 124d → 16d |  |
| 155 | NPC Data | 2000-12-20 → 2001-01-22 (+33d) | 2000-12-20 → 2001-01-22 (+33d) |  |  | 104d → 15d |  |
| 158 | NPC Data | 2000-12-29 → 2001-01-23 (+25d) | 2000-12-29 → 2001-01-23 (+25d) |  |  | 97d → 14d |  |
| 160 | Walk | 2001-03-01 → 2001-01-24 (-36d) | 2001-03-02 → 2001-01-25 (-36d) |  |  | 52d → 12d |  |
| 161 | Teeter | 2001-03-15 → 2001-01-26 (-48d) | 2001-03-16 → 2001-01-29 (-46d) |  |  | 42d → 10d |  |
| 162 | Misc | 2001-03-19 → 2001-01-30 (-48d) | 2001-03-20 → 2001-01-31 (-48d) |  |  | 40d → 8d |  |
| 163 | **Power-Up States** | 2001-03-21 → 2001-02-01 (-48d) | 2001-04-23 → 2001-02-12 (-70d) | 24d → 8d |  | 16d → 0d |  |
| 164 | Butt Bounce | 2001-03-23 → 2001-02-01 (-50d) | 2001-03-26 → 2001-02-02 (-52d) |  |  | 36d → 6d |  |
| 165 | Karate Chop | 2001-03-27 → 2001-02-05 (-50d) | 2001-03-28 → 2001-02-06 (-50d) |  |  | 34d → 4d |  |
| 166 | Net | 2001-03-29 → 2001-02-07 (-50d) | 2001-03-30 → 2001-02-08 (-50d) |  |  | 32d → 2d |  |
| 167 | Launcher | 2001-04-02 → 2001-02-09 (-52d) | 2001-04-03 → 2001-02-12 (-50d) |  |  | 30d → 0d |  |
| 170 | Gary | 2000-11-13 → 2001-01-15 (+63d) | 2000-11-17 → 2001-01-19 (+63d) |  |  | 127d → 16d |  |
| 175 | **Memcard** | 2000-11-21 → 2001-01-15 (+55d) | 2000-12-18 → 2001-02-09 (+53d) |  |  | 106d → 1d |  |
| 176 | Load | 2000-11-21 → 2001-01-15 (+55d) | 2000-12-04 → 2001-01-26 (+53d) |  |  | 116d → 11d |  |
| 177 | Save | 2000-12-05 → 2001-01-29 (+55d) | 2000-12-18 → 2001-02-09 (+53d) |  |  | 106d → 1d |  |
| 184 | Platform Layer | 2000-11-09 → 2001-02-13 (+96d) | 2000-11-15 → 2001-02-14 (+91d) | 5d → 2d |  | 129d → 18d |  |
| 185 | Item Layer | 2000-11-23 → 2001-02-15 (+84d) | 2000-11-29 → 2001-02-16 (+79d) | 5d → 2d |  | 119d → 16d |  |
| 193 | **Platforms** | 2001-02-01 → 2001-02-21 (+20d) | 2001-02-20 → 2001-03-08 (+16d) | 14d → 12d |  | 60d → 2d |  |
| 194 | **Types** | 2001-02-01 → 2001-02-21 (+20d) | 2001-02-12 → 2001-03-01 (+17d) | 8d → 7d |  | 66d → 7d |  |
| 195 | Standard | 2001-02-01 → 2001-02-21 (+20d) | 2001-02-02 → 2001-02-21 (+19d) | 2d → 1d |  | 72d → 13d |  |
| 196 | Weighted | 2001-02-05 → 2001-02-22 (+17d) | 2001-02-06 → 2001-02-23 (+17d) |  |  | 70d → 11d |  |
| 197 | Destructible | 2001-02-07 → 2001-02-26 (+19d) | 2001-02-08 → 2001-02-27 (+19d) |  |  | 68d → 9d |  |
| 198 | See-Saw | 2001-02-09 → 2001-02-28 (+19d) | 2001-02-12 → 2001-03-01 (+17d) |  |  | 66d → 7d |  |
| 199 | **Motion** | 2001-02-13 → 2001-03-02 (+17d) | 2001-02-20 → 2001-03-08 (+16d) | 6d → 5d |  | 60d → 2d |  |
| 200 | Static | 2001-02-13 → 2001-03-02 (+17d) | 2001-02-14 → 2001-03-02 (+16d) | 2d → 1d |  | 64d → 6d |  |
| 201 | Linear Path | 2001-02-15 → 2001-03-05 (+18d) | 2001-02-16 → 2001-03-06 (+18d) |  |  | 62d → 4d |  |
| 202 | Circular Path | 2001-02-19 → 2001-03-07 (+16d) | 2001-02-20 → 2001-03-08 (+16d) |  |  | 60d → 2d |  |
| 203 | **Pick-ups** | 2001-02-21 → 2001-03-09 (+16d) | 2001-02-22 → 2001-03-09 (+15d) | 2d → 1d |  | 58d → 1d |  |
| 204 | Types | 2001-02-23 → 2001-03-09 (+14d) | 2001-02-26 → 2001-03-09 (+11d) | 2d → 1d |  | 56d → 1d |  |
| 205 | **Power-Ups** | 2001-02-23 → 2001-03-12 (+17d) | 2001-02-26 → 2001-03-12 (+14d) | 2d → 1d |  | 56d → 0d |  |
| 206 | Types | 2000-10-16 → 2001-03-12 (+147d) | 2000-10-16 → 2001-03-12 (+147d) | 0d → 1d |  | 152d → 0d |  |
| 215 | **Front-end** | 2001-01-16 → 2001-02-12 (+27d) | 2001-02-14 → 2001-02-27 (+13d) | 22d → 12d |  | 64d → 9d |  |
| 216 | **Main Screen GUI** | 2001-01-16 → 2001-02-12 (+27d) | 2001-02-12 → 2001-02-23 (+11d) | 20d → 10d |  | 66d → 11d |  |

| ID | Task | Start | Finish | Duration | Complete | Total float | Other |
| --- | --- | --- | --- | --- | --- | --- | --- |
| 217 | New Game GUI | 2001-01-16 → 2001-02-12 (+27d) | 2001-01-19 → 2001-02-13 (+25d) | 4d → 2d |  | 82d → 19d |  |
| 218 | Load Game GUI | 2001-01-22 → 2001-02-14 (+23d) | 2001-01-25 → 2001-02-15 (+21d) | 4d → 2d |  | 78d → 17d |  |
| 219 | **Options GUI** | 2001-01-26 → 2001-02-16 (+21d) | 2001-02-12 → 2001-02-23 (+11d) | 12d → 6d |  | 66d → 11d |  |
| 220 | Control GUI | 2001-01-26 → 2001-02-16 (+21d) | 2001-01-31 → 2001-02-19 (+19d) | 4d → 2d |  | 74d → 15d |  |
| 221 | Audio GUI | 2001-02-01 → 2001-02-20 (+19d) | 2001-02-06 → 2001-02-21 (+15d) | 4d → 2d |  | 70d → 13d |  |
| 222 | Screen GUI | 2001-02-07 → 2001-02-22 (+15d) | 2001-02-12 → 2001-02-23 (+11d) | 4d → 2d |  | 66d → 11d |  |
| 223 | Demo Loop | 2001-02-13 → 2001-02-26 (+13d) | 2001-02-14 → 2001-02-27 (+13d) |  |  | 64d → 9d |  |
| 224 | Load (Game) | 2001-01-12 → 2001-02-28 (+47d) | 2001-01-15 → 2001-02-28 (+44d) | 2d → 1d |  | 86d → 8d |  |
| 225 | **In-Game GUI** | 2001-02-15 → 2001-03-01 (+14d) | 2001-02-28 → 2001-03-12 (+12d) | 10d → 8d |  | 54d → 0d |  |
| 226 | Level Map | 2001-02-15 → 2001-03-01 (+14d) | 2001-02-20 → 2001-03-06 (+14d) |  |  | 60d → 4d |  |
| 227 | Panel | 2001-02-21 → 2001-03-07 (+14d) | 2001-02-22 → 2001-03-07 (+13d) | 2d → 1d |  | 58d → 3d |  |
| 228 | Pause Menu | 2001-02-23 → 2001-03-08 (+13d) | 2001-02-28 → 2001-03-12 (+12d) | 4d → 3d |  | 54d → 0d |  |
| 236 | Coral Blower | 2001-04-04 → 2001-03-13 (-22d) | 2001-04-05 → 2001-03-14 (-22d) |  |  | 28d → 18d |  |
| 237 | Bubble Mixture | 2001-04-06 → 2001-03-15 (-22d) | 2001-04-09 → 2001-03-16 (-24d) |  |  | 26d → 16d |  |
| 238 | Balloon | 2001-04-10 → 2001-03-19 (-22d) | 2001-04-11 → 2001-03-20 (-22d) |  |  | 24d → 14d |  |
| 239 | Diving Helmet | 2001-04-12 → 2001-03-21 (-22d) | 2001-04-13 → 2001-03-22 (-22d) |  |  | 22d → 12d |  |
| 240 | Glasses | 2001-04-16 → 2001-03-23 (-24d) | 2001-04-17 → 2001-03-26 (-22d) |  |  | 20d → 10d |  |
| 241 | Superhero Ring | 2001-04-18 → 2001-03-27 (-22d) | 2001-04-19 → 2001-03-28 (-22d) |  |  | 18d → 8d |  |
| 242 | Squeaky Boots | 2001-04-20 → 2001-03-29 (-22d) | 2001-04-23 → 2001-03-30 (-24d) |  |  | 16d → 6d |  |
| 243 | **Misc States** | 2001-04-24 → 2001-04-02 (-22d) | 2001-04-25 → 2001-04-03 (-22d) |  |  | 14d → 4d |  |
| 244 | Communicate | 2001-04-24 → 2001-04-02 (-22d) | 2001-04-25 → 2001-04-03 (-22d) |  |  | 14d → 4d |  |
| 253 | FMA | 2000-10-16 → 2001-03-13 (+148d) | 2000-10-16 → 2001-04-09 (+175d) | 0d → 20d |  | 152d → 0d |  |
| 308 | Implement localised version | 2000-10-16 A → 2001-09-05 (+324d) | 2000-10-16 A → 2001-09-11 (+330d) | 1d? → 5d | 100% → 0% | none → 21d | was named FireAim; resources none → Dave Owens |
| 309 | Localisation code issues | 2000-10-16 A → 2001-09-12 (+331d) | 2000-10-16 A → 2001-09-18 (+337d) | 1d? → 5d | 100% → 0% | none → 16d | was named FireRecoil; resources none → Dave Owens |
| 312 | **Dave Owens** | 2000-10-16 A → 2001-09-19 (+338d) | 2000-10-16 A → 2001-10-02 (+351d) | 1d? → 10d | 100% → 0% | none → 14d | was named NetShoot |
| 313 | Implement localised version | 2000-10-16 A → 2001-09-19 (+338d) | 2000-10-16 A → 2001-09-25 (+344d) | 1d? → 5d | 100% → 0% | none → 19d | was named Karate; resources none → Dave Owens |
| 318 | Archive | 2000-10-16 A → 2001-10-03 (+352d) | 2000-10-16 A → 2001-10-04 (+353d) | 1d? → 2d | 100% → 0% | none → 30d | was named Whirlwind; resources none → Dave Owens |
